# Independent Travel Training w/ VR

Schedule from MS Project, 2022-10-03 to 2023-05-02.

## Calendars

- Standard: Mon-Fri 08:00-12:00, 13:00-17:00; Sat-Sun off. Exceptions (off unless hours are given): 2022-10-15 08:00-12:00, 13:00-17:00, 2022-10-22 to 2022-10-23 08:00-12:00, 13:00-17:00, 2022-10-29 to 2022-10-30 08:00-12:00, 13:00-17:00, 2022-11-05 08:00-12:00, 13:00-17:00, 2022-11-13 08:00-12:00, 13:00-17:00, 2022-11-26 to 2022-11-27 08:00-12:00, 13:00-17:00, 2022-12-03 to 2022-12-04 08:00-12:00, 13:00-17:00, 2022-12-11 08:00-12:00, 13:00-17:00, 2023-03-18 08:00-12:00, 13:00-17:00.

## Resources

| Resource |
| --- |
| Management |
| Project Manager |
| Analyst |
| Developer |
| Testers |
| Trainers |
| Technical Communicators |
| Deployment Team |

## Schedule

| ID | WBS | Task | Type | Duration | Start | Finish | Predecessors | Total slack | Free slack | Constraint |
| --- | --- | --- | --- | --- | --- | --- | --- | --- | --- | --- |
| 1 | 1 | **Project Milestones** |  | 162d | 2022-10-03 | 2023-04-27 |  |  |  |  |
| 2 | 1.1 | Review Point 1 | manual | 1d | 2022-10-21 | 2022-10-21 |  |  |  | finish no earlier than 2022-10-21 |
| 3 | 1.2 | Ethics Declaration | manual | 1d | 2022-10-21 | 2022-10-21 |  |  |  |  |
| 4 | 1.3 | Ethics Submission |  | 30d | 2022-10-24 | 2022-11-26 |  | 117d |  | start no earlier than 2022-10-24 |
| 5 | 1.4 | Tutorial 2 | manual | 1d | 2022-11-25 | 2022-11-25 |  |  |  | start no earlier than 2022-11-25 |
| 6 | 1.5 | Review Point 2 | manual | 1d | 2022-12-02 | 2022-12-02 |  |  |  | start no earlier than 2022-12-02 |
| 7 | 1.6 | Tutorial 3 | manual | 1d | 2023-02-10 | 2023-02-10 |  |  |  | start no earlier than 2023-02-10 |
| 8 | 1.7 | Review Point 3 | manual | 1d | 2023-02-17 | 2023-02-17 |  |  |  | start no earlier than 2023-02-17 |
| 9 | 1.8 | Showcase Entry | manual | 1d | 2023-02-17 | 2023-02-17 |  |  |  | finish no earlier than 2023-02-17 |
| 10 | 1.9 | Personal Project Deadline | manual | 1d | 2023-03-17 | 2023-03-17 |  |  |  | start no earlier than 2023-03-17 |
| 11 | 1.10 | Tutorial 4 | manual | 1d | 2023-04-07 | 2023-04-07 |  |  |  | start no earlier than 2023-04-07 |
| 12 | 1.11 | Project Deadline | manual | 1d | 2023-04-21 | 2023-04-21 |  |  |  | start no earlier than 2023-04-21 |
| 13 | 1.12 | Showcase | manual | 1d | 2023-04-27 | 2023-04-27 |  |  |  | start no earlier than 2023-04-27 |
| 14 | 2 | **Other Commitments** |  | 132d? | 2022-11-09 | 2023-05-02 |  |  |  |  |
| 15 | 2.1 | **Mobile Platform Applications Module Coursework** |  | 100d | 2022-11-09 | 2023-03-18 |  | 32d |  |  |
| 16 | 2.1.1 | CW1 Submission |  | 4d | 2022-11-09 | 2022-11-13 |  | 128d |  | finish no earlier than 2022-11-13 |
| 17 | 2.1.2 | CW2 Submission |  | 30d | 2023-02-07 | 2023-03-18 |  | 32d |  | finish no earlier than 2023-03-18 |
| 18 | 2.2 | Graphics in Games Module Coursework |  | 75d | 2023-01-17 | 2023-04-28 |  | 2d |  | finish no earlier than 2023-04-28 |
| 19 | 2.3 | Serious Games Module Coursework |  | 134d | 2022-11-07 | 2023-05-02 |  | 0d |  | finish no earlier than 2023-05-02 |
| 20 | 2.4 | **Virtual Reality Module Coursework** |  | 143d? | 2022-10-17 | 2023-04-17 |  |  |  |  |
| 21 | 2.4.1 | Report Submission |  | 10d | 2022-12-06 | 2022-12-16 |  | 98d |  | finish no earlier than 2022-12-16 |
| 22 | 2.4.2 | Software Submission |  | 40d | 2023-02-07 | 2023-03-31 |  | 22d |  | finish no earlier than 2023-03-31 |
| 23 | 3 | **Implementation** |  | 88d | 2022-10-10 | 2023-01-23 |  |  |  |  |
| 24 | 3.1 | **Automated Traffic System** |  | 30d | 2022-10-10 | 2022-11-10 |  | 130d |  |  |
| 25 | 3.1.1 | Moving Vehicles |  | 2d | 2022-10-10 | 2022-10-11 |  | 158d |  |  |
| 26 | 3.1.2 | Vehicle Pathing System |  | 3d | 2022-10-13 | 2022-10-15 |  | 152d | 0d | start no earlier than 2022-10-13 |
| 27 | 3.1.3 | Variable Vehicle Speeds |  | 2d | 2022-10-17 | 2022-10-18 | 26 | 152d |  |  |
| 28 | 3.1.4 | Variable Vehicle Spawn rates |  | 2d | 2022-10-20 | 2022-10-21 |  | 147d | 0d | start no earlier than 2022-10-20 |
| 29 | 3.1.5 | Vehicles stop in front of each other |  | 2d | 2022-10-22 | 2022-10-23 | 28 | 147d |  | finish no earlier than 2022-10-23 |
| 30 | 3.1.6 | Vehicles stop when user is in front of it |  | 2d | 2022-10-26 | 2022-10-27 |  | 143d |  | start no earlier than 2022-10-26 |
| 31 | 3.1.7 | Vehicles follow traffic light system |  | 2d | 2022-10-29 | 2022-10-30 |  | 140d |  | finish no earlier than 2022-10-30 |
| 32 | 3.1.8 | Vehicle interaction with zebra crossing |  | 2d | 2022-11-02 | 2022-11-03 |  | 136d |  | start no earlier than 2022-11-02 |
| 33 | 3.1.9 | Vehicle 3D models |  | 5d | 2022-11-05 | 2022-11-10 |  | 130d |  | start no earlier than 2022-11-05 |

| ID | WBS | Task | Duration | Start | Finish | Predecessors | Total slack | Free slack | Constraint |
| --- | --- | --- | --- | --- | --- | --- | --- | --- | --- |
| 34 | 3.2 | **Application Levels** | 22d | 2022-11-25 | 2022-12-19 |  |  |  |  |
| 35 | 3.2.1 | Plain Crossing Level | 1d | 2022-11-25 | 2022-11-25 |  | 116d | 0d |  |
| 36 | 3.2.2 | Zebra Crossing Level | 1d | 2022-11-26 | 2022-11-26 | 35 | 116d | 0d | start no earlier than 2022-11-26 |
| 37 | 3.2.3 | Pelican Crossing Level | 1d | 2022-11-27 | 2022-11-27 | 36 | 116d |  | start no earlier than 2022-11-27 |
| 38 | 3.2.4 | Crossroad Crossing Level | 2d | 2022-11-29 | 2022-11-30 |  | 113d |  | start no earlier than 2022-11-29 |
| 39 | 3.2.5 | Practice Level | 1d | 2022-12-03 | 2022-12-03 |  | 109d | 0d | finish no earlier than 2022-12-03 |
| 40 | 3.2.6 | Level Starting Point | 1d | 2022-12-04 | 2022-12-04 | 39 | 109d |  | start no earlier than 2022-12-04 |
| 41 | 3.2.7 | Level Completion Point | 1d | 2022-12-06 | 2022-12-06 |  | 107d |  | start no earlier than 2022-12-06 |
| 42 | 3.2.8 | Road 3D Models | 6d | 2022-11-25 | 2022-11-30 |  | 113d |  |  |
| 43 | 3.2.9 | Surrounding Area Decorations | 4d | 2022-12-09 | 2022-12-13 |  | 101d |  | start no earlier than 2022-12-09 |
| 44 | 3.3 | **User and Locomotion** | 15d | 2022-12-19 | 2023-01-06 |  |  |  |  |
| 45 | 3.3.1 | First and Third-Person POVs | 3d | 2022-12-19 | 2022-12-21 |  | 83d | 0d |  |
| 46 | 3.3.2 | Generic Player Avatar | 2d | 2022-12-22 | 2022-12-23 | 45 | 83d | 0d |  |
| 47 | 3.3.3 | Walk-in Place Mechanic | 5d | 2022-12-26 | 2022-12-30 | 46 | 83d | 0d |  |
| 48 | 3.3.4 | Joystick Controls | 5d | 2023-01-02 | 2023-01-06 | 47 | 83d |  |  |
| 49 | 3.4 | **Menu Functionality** | 11d | 2023-01-09 | 2023-01-23 |  |  |  |  |
| 50 | 3.4.1 | Start-up Menu | 4d | 2023-01-09 | 2023-01-12 |  | 72d | 0d |  |
| 51 | 3.4.2 | Level Selection | 2d | 2023-01-13 | 2023-01-16 | 50 | 72d | 0d |  |
| 52 | 3.4.3 | Application Instructions | 2d | 2023-01-17 | 2023-01-18 | 51 | 72d | 0d |  |
| 53 | 3.4.4 | Level Results | 3d | 2023-01-19 | 2023-01-23 | 52 | 72d |  |  |
| 54 | 4 | **Testing** | 14d? | 2023-02-20 | 2023-03-09 |  |  |  |  |
| 55 | 4.1 | Testing Equipment Setup | 2d | 2023-02-20 | 2023-02-21 |  | 45d | 0d | start no earlier than 2023-02-20 |
| 56 | 4.2 | Testing Session | 1d? | 2023-02-22 | 2023-02-22 | 55 | 45d | 0d |  |
| 57 | 4.3 | Feedback Session | 2d | 2023-02-23 | 2023-02-24 | 56 | 45d |  |  |

| ID | WBS | Task | Duration | Start | Finish | Total slack | Constraint |
| --- | --- | --- | --- | --- | --- | --- | --- |
| 58 | 5 | **Documentation** | 50d | 2023-01-09 | 2023-03-17 |  |  |
| 59 | 5.1 | Review and update report | 40d | 2023-01-09 | 2023-03-03 | 43d | start no earlier than 2023-01-09 |
| 60 | 5.2 | Review and updat Gantt Chart | 30d | 2023-01-09 | 2023-02-17 | 53d | start no earlier than 2023-01-09 |
